# Rascal Master Schedule

Schedule from GanttProject, 2014-03-17 to 2014-08-01.
Saint Louis University
This schedule lists all of mission milestones associated with the Rascal mission, which is being co-developed with resources from Saint Louis University and the Boeing Company.

## Calendars

- Project calendar: Mon-Sun working.

## Resources

| Resource | Group |
| --- | --- |
| Tom Moline | Primary Spacecraft Program Manager |
| Nate Richard | Secondary Spacecraft Program Manager |
| Jennifer Babb | DCK Lead |
| Tyler Olson | PRP Lead |
| Kate Clements | Primary ADC Co-Lead |
| Nathan Bossart | Primary PLD Lead |
| Joe Mayer |  |

## Schedule

| ID | WBS | Task | Type | Duration | Start | Finish | Predecessors | Resources |
| --- | --- | --- | --- | --- | --- | --- | --- | --- |
| 1 | 1 | **Primary ADC Subsystem** |  | 16d | 2014-03-17 | 2014-04-01 |  | Tom Moline [75%]; Kate Clements [25%] |
| 2 | 1.1 | Preliminary Relative Orbit Analysis |  | 5d | 2014-03-17 | 2014-03-21 |  | Tom Moline |
| 3 | 1.2 | Preliminary Controls Analysis |  | 4d | 2014-03-22 | 2014-03-25 | 2 | Tom Moline |
| 4 | 1.3 | Preliminary Controls Implementation |  | 7d | 2014-03-26 | 2014-04-01 | 3 |  |
| 5 | 1.4 | Preliminary ADC Sensor Research |  | 12d | 2014-03-21 | 2014-04-01 |  | Kate Clements |
| 6 | 2 | Primary PLD Subsystem |  | 138d | 2014-03-17 | 2014-08-01 |  |  |
| 7 | 3 | **PRP Subsystem** |  | 12d | 2014-03-21 | 2014-04-01 |  |  |
| 8 | 3.1 | Preliminary PRP System Research |  | 12d | 2014-03-21 | 2014-04-01 |  | Tyler Olson |
| 9 | 4 | Primary CDH Subsystem |  | 138d | 2014-03-17 | 2014-08-01 |  |  |
| 10 | 5 | DCK Subsystem |  | 138d | 2014-03-17 | 2014-08-01 |  |  |
| 11 | 6 | Secondary STR Subsystem |  | 138d | 2014-03-17 | 2014-08-01 |  |  |
| 12 | 7 | Secondary COM Subsystem |  | 138d | 2014-03-17 | 2014-08-01 |  |  |
| 13 | 8 | Secondary PWR Subsystem |  | 138d | 2014-03-17 | 2014-08-01 |  |  |
| 14 | 9 | Secondary ADC Subsystem |  | 138d | 2014-03-17 | 2014-08-01 |  |  |
| 15 | 10 | Secondary CDH Subsystem |  | 138d | 2014-03-17 | 2014-08-01 |  |  |
| 16 | 11 | Student Graduation | milestone | 0d | 2014-05-15 | 2014-05-15 |  |  |
| 17 | 12 | EDU Delivery | milestone | 0d | 2014-08-01 | 2014-08-01 |  |  |

Notes:
- 1: Primary ADC Tasks for the Rascal EDU Work
- 2: First principles and trend analysis for relative motion betwee two spacecraft
- 3: Analyzing ideal oribt path for docking mission type, as to determine the affect of sensor noise, pertubatoins, etc.
- 4: Implementing controls analysis into Matlab for testing and simulation
- 5: Figure out what is necessary/available for determining local spacecraft orientation/inertial position.
- 6: All tasks associated with the PLD subsystem for work on Rascal EDU
- 7: All tasks associated with thePRP subsystem for work on Rascal EDU
- 8: Figuring out the coordinate system terminology that is to be incorperated into the design, picking volume constraints, defining system performance characteristics, etc.
- 9: All tasks associated with the primary CDH subsystem for work on Rascal EDU
- 10: All tasks associated with the DCK subsystem for work on Rascal EDU
- 11: All tasks associated with the Secondary STR subsystem for work on Rascal EDU
- 12: All tasks associated with the Secondary COM subsystem for work on Rascal EDU
- 13: All tasks associated with the Secondary PWR subsystem for work on Rascal EDU
- 14: All tasks associated with the Secondary STR subsystem for work on Rascal EDU
- 15: All tasks associated with the Secondary CDH subsystem for work on Rascal EDU
